# 总图管理系统项目实施计划

Schedule from MS Project, 2013-02-02 to 2013-03-13, status date 2011-04-18, A marks actual dates.

## Calendars

- 标准: Mon-Fri 09:00-12:00, 13:00-18:00; Sat-Sun off. Exceptions (off unless hours are given): 2013-02-02 to 2013-02-03 08:00-12:00, 13:00-17:00, 2013-02-07 to 2013-02-19.

## Resources

| Resource | Rate |
| --- | --- |
| 聂永江 | 125 |
| 施宏 | 125 |
| 封海龙 | 125 |
| 董存濮 | 125 |
| 任凯 | 125 |
| 冯春雷 | 125 |
| 凌灿 | 125 |
| 尹东梁 | 125 |
| 余文虎 | 125 |
| 袁鑫 | 125 |
| 雷亚 | 125 |
| 高雪梅 | 125 |
| 高第 | 125 |
| 赵娜 | 125 |
| 需求调研工程师 |  |
| 开发组长 |  |
| 软件设计工程师 |  |
| 需求分析工程师 |  |
| 软件开发工程师1 |  |
| 项目经理 |  |
| 实施工程师1 |  |
| 杨晋 |  |
| 郝玉刚 |  |
| 齐焕然 |  |
| 袁玉萃 |  |
| 客户 |  |
| 开发人员 |  |
| 许英明 |  |
| 朱文学 |  |
| 李博 |  |
| 张渊博 |  |
| 马毅 |  |
| 龚燕 |  |
| 刘泽文 |  |
| 邓珑 |  |
| 周艳 |  |
| 王珏 |  |

## Schedule

| ID | WBS | Task | Duration | Start | Finish | Predecessors | Complete | Baseline start | Baseline finish | Baseline duration | Constraint | Resources | Work | Actual work | Baseline cost |
| --- | --- | --- | --- | --- | --- | --- | --- | --- | --- | --- | --- | --- | --- | --- | --- |
| 1 | 1 | **分析** | 2d | 2013-02-03 A | 2013-02-05 A |  | 100% | 2011-04-18 | 2011-04-26 | 7d? |  |  | 12h | 12h | 8,000 |
| 2 | 1.1 | **需求分析** | 2d | 2013-02-03 A | 2013-02-05 A |  | 100% | 2011-04-21 | 2011-04-22 | 2d? |  |  | 12h | 12h | 3,000 |
| 3 | 1.1.1 | 软件需求分析 | 1d | 2013-02-03 A | 2013-02-04 A |  | 100% | 2011-04-22 | 2011-04-22 | 1d? | start no earlier than 2013-02-03 | 杨晋 | 8h | 8h | 1,000 |
| 4 | 1.1.2 | 维护需求跟踪矩阵 | 1d | 2013-02-04 A | 2013-02-05 A | 3 | 100% |  |  |  | start no earlier than 2013-02-03 | 杨晋 [50%] | 4h | 4h |  |
| 5 | 2 | **设计** | 3d | 2013-02-05 A | 2013-02-21 A |  | 100% | 2011-04-18 | 2011-05-10 | 17d? |  |  | 24h | 24h | 12,000 |
| 6 | 2.1 | **概要设计** | 3d | 2013-02-05 A | 2013-02-21 A |  | 100% | 2011-04-29 | 2011-05-06 | 6d? |  |  | 24h | 24h | 6,000 |
| 7 | 2.1.1 | 数据库设计 | 1d | 2013-02-05 A | 2013-02-06 A | 4, 3 | 100% | 2011-05-02 | 2011-05-02 | 1d? | start no earlier than 2013-02-04 | 郝玉刚 | 8h | 8h | 1,000 |
| 8 | 2.1.2 | 编写概要设计说明书 | 1d | 2013-02-06 A | 2013-02-20 A | 7 | 100% | 2011-05-04 | 2011-05-04 | 1d? | start no earlier than 2011-05-04 | 郝玉刚 | 8h | 8h | 1,000 |
| 9 | 2.1.3 | 维护需求跟踪矩阵 | 1d | 2013-02-20 A | 2013-02-21 A | 8 | 100% | 2011-05-06 | 2011-05-06 | 1d? | start no earlier than 2011-05-06 | 杨晋 [50%]; 郝玉刚 [50%] | 8h | 8h | 1,000 |
| 10 | 3 | **实现** | 6d | 2013-02-20 A | 2013-02-28 A |  | 100% | 2011-05-10 | 2011-05-20 | 9d? |  |  | 83.2h | 83.2h | 17,000 |
| 11 | 3.1 | 系统编码 | 2d | 2013-02-20 A | 2013-02-22 A | 8 | 100% | 2011-05-10 | 2011-05-11 | 2d? | start no earlier than 2013-02-02 | 郝玉刚; 李博; 龚燕; 周艳 [20%] | 51.2h | 51.2h | 4,000 |
| 12 | 3.2 | 代码审查 | 1d | 2013-02-22 A | 2013-02-25 A | 11 | 100% |  |  |  |  | 郝玉刚 | 8h | 8h |  |
| 13 | 3.3 | 手册编写 | 3d | 2013-02-25 A | 2013-02-28 A | 12 | 100% | 2011-05-16 | 2011-05-23 | 5d | start no earlier than 2013-02-03 | 龚燕 | 24h | 24h |  |
| 14 | 4 | **测试** | 8.12d | 2013-02-05 A | 2013-02-28 A |  | 100% | 2011-04-07 | 2011-06-21 | 51.75d? |  |  | 72h | 72h | 2,000 |
| 15 | 4.1 | 测试设计 | 1.5d | 2013-02-05 A | 2013-02-06 A |  | 100% | 2011-04-07 | 2011-05-31 | 38d? | start no earlier than 2013-02-05 | 邓珑; 刘泽文 | 24h | 24h | 2,000 |
| 16 | 4.2 | 软件测试(集成测试、系统测试） | 3d | 2013-02-25 A | 2013-02-28 A | 15, 12 | 100% | 2011-06-03 | 2011-06-21 | 11.12d? | start no earlier than 2012-10-09 | 邓珑; 刘泽文 | 48h | 48h |  |
| 17 | 5 | 技术评审(含需求、设计、实现及测试） | 1d? | 2013-02-28 A | 2013-03-01 A | 16 | 100% |  |  |  | start no earlier than 2013-02-22 | 齐焕然 [16.7%]; 杨晋 [16.7%]; 郝玉刚 [16.7%]; 李博 [16.7%]; 袁玉萃 [16.7%]; 龚燕 [16.7%] | 8h | 8h |  |
| 18 | 6 | **验收** | 16d? | 2013-02-03 A | 2013-03-08 A |  | 100% | 2011-06-01 | 2011-06-20 | 14d? |  |  | 64h | 64h | 14,000 |
| 19 | 6.1 | **试运行** | 14d? | 2013-02-03 A | 2013-03-06 A | 16 | 100% | 2011-06-14 | 2011-06-16 | 3d? |  |  | 56h | 56h | 3,000 |
| 20 | 6.1.1 | 现场问题采集反馈 | 3d | 2013-02-03 A | 2013-02-06 A |  | 100% | 2011-06-01 | 2011-06-08 | 6d? | start no earlier than 2013-02-03 | 朱文学 | 24h | 24h | 6,000 |
| 21 | 6.1.2 | 现场更新部署 | 2d? | 2013-03-04 A | 2013-03-06 A | 17, 27 | 100% |  |  |  |  | 杨晋; 朱文学 | 32h | 32h |  |
| 22 | 6.2 | 项目验收交付 | 2d | 2013-03-06 A | 2013-03-08 A | 21 | 100% | 2011-06-17 | 2011-06-20 | 2d? | start no earlier than 2013-02-05 | 杨晋 [15.6%]; 齐焕然 [3.1%]; 客户 [15.6%]; 王珏 [15.6%] | 8h | 8h | 2,000 |
| 23 | 7 | **管理支持** | 20.88d? | 2013-02-02 A | 2013-03-13 A |  | 100% | 2011-04-12 | 2011-06-21 | 51d? |  |  | 164h | 164h | 52,000 |
| 24 | 7.1 | **项目管理** | 20.88d? | 2013-02-02 A | 2013-03-13 A |  | 100% | 2011-04-12 | 2011-06-21 | 51d? |  |  | 96h | 96h | 50,000 |
| 25 | 7.1.1 | 每周周会 | 19d | 2013-02-03 A | 2013-03-13 A |  | 100% |  |  |  | start no earlier than 2013-02-03 | 杨晋 [4%]; 郝玉刚 [4%]; 袁玉萃 [4%]; 李博 [3.9%]; 龚燕 [5.1%] | 32h | 32h |  |

| ID | WBS | Task | Duration | Start | Finish | Predecessors | Complete | Baseline start | Baseline finish | Baseline duration | Constraint | Resources | Work | Actual work |
| --- | --- | --- | --- | --- | --- | --- | --- | --- | --- | --- | --- | --- | --- | --- |
| 26 | 7.1.2 | **里程碑会** | 8.88d? | 2013-03-01 A | 2013-03-13 A |  | 100% |  |  |  |  |  | 16h | 16h |
| 27 | 7.1.2.1 | 系统测试报告/手册完成阶段 | 1d? | 2013-03-01 A | 2013-03-04 A | 17 | 100% |  |  |  | start no earlier than 2013-02-22 | 齐焕然 [16.7%]; 杨晋 [16.7%]; 郝玉刚 [16.7%]; 李博 [16.7%]; 袁玉萃 [16.7%]; 龚燕 [16.7%] | 8h | 8h |
| 28 | 7.1.2.2 | 验收交付完成 | 1d? | 2013-03-13 A | 2013-03-13 A | 22 | 100% |  |  |  | start no earlier than 2013-03-13 | 齐焕然 [16.7%]; 杨晋 [16.7%]; 郝玉刚 [16.7%]; 李博 [16.7%]; 袁玉萃 [16.7%]; 龚燕 [16.7%] | 8h | 8h |
| 29 | 7.1.3 | 问题/缺陷管理 | 20d? | 2013-02-02 A | 2013-03-13 A |  | 100% |  |  |  | start no earlier than 2013-02-02 | 杨晋 [5%]; 袁玉萃 [5%]; 郝玉刚 [5%] | 24h | 24h |
| 30 | 7.1.4 | 风险管理 | 20d? | 2013-02-02 A | 2013-03-13 A |  | 100% |  |  |  | start no earlier than 2013-02-02 | 杨晋 [15%] | 24h | 24h |
| 31 | 7.2 | **支持过程** | 20d? | 2013-02-02 A | 2013-03-13 A |  | 100% | 2011-04-19 | 2011-06-29 | 50d |  |  | 56h | 56h |
| 32 | 7.2.1 | 配置管理 | 20d | 2013-02-02 A | 2013-03-13 A |  | 100% | 2011-04-19 | 2011-06-29 | 50d | start no earlier than 2013-02-02 | 袁玉萃 [10%] | 16h | 16h |
| 33 | 7.2.2 | 质量保证 | 20d | 2013-02-02 A | 2013-03-13 A |  | 100% | 2011-04-19 | 2011-06-29 | 50d | start no earlier than 2013-02-02 | 袁玉萃 [10%] | 16h | 16h |
| 34 | 7.2.3 | 决策分析 | 20d? | 2013-02-02 A | 2013-03-13 A |  | 100% |  |  |  | start no earlier than 2013-02-02 | 杨晋 [5%] | 8h | 8h |
| 35 | 7.2.4 | 度量分析 | 20d? | 2013-02-02 A | 2013-03-13 A |  | 100% |  |  |  | start no earlier than 2013-02-02 | 杨晋 [5%]; 袁玉萃 [5%] | 16h | 16h |
| 36 | 7.3 | 项目组培训 | 1d? | 2013-02-04 A | 2013-02-04 A |  | 100% |  |  |  | start no earlier than 2013-02-04 | 齐焕然 [25%]; 杨晋 [25%]; 郝玉刚 [25%]; 李博 [25%]; 袁玉萃 [25%]; 龚燕 [25%] | 12h | 12h |
