# wbs_90

Schedule from MS Project, 2015-01-16 to 2015-03-12.

## Calendars

- 90travel: Mon-Fri 08:00-12:00, 13:00-17:00; Sat off; Sun 08:00-12:00, 13:00-17:00. Exceptions (off unless hours are given): 2015-02-17 to 2015-02-25 (春节).

## Resources

| Resource |
| --- |
| 唐超 |
| 费长顺 |
| 周艳 |
| 吴瑶瑶 |
| 华晨光 |
| 苏小燕 |
| 唐立广 |
| 吴琼 |

## Schedule

| ID | WBS | Task | Duration | Start | Finish | Predecessors | Total slack | Free slack | Constraint | Resources | Work |
| --- | --- | --- | --- | --- | --- | --- | --- | --- | --- | --- | --- |
| 1 | 1 | 需求分析 | 1d | 2015-01-16 | 2015-01-16 |  | 0d |  | finish no earlier than 2015-01-16 | 唐超; 费长顺 | 16h |
| 2 | 2 | 原型设计 | 4d | 2015-01-19 | 2015-01-22 | 1 | 0d |  | start no earlier than 2015-01-18 | 唐超; 费长顺 | 64h |
| 3 | 3 | 交互设计 | 2d | 2015-01-23 | 2015-01-26 | 2 | 31d |  | start no earlier than 2015-01-22 | 唐超; 周艳; 吴瑶瑶 | 48h |
| 4 | 4 | 数据库设计 | 2d | 2015-01-23 | 2015-01-26 | 2 | 18d | 0d | start no earlier than 2015-01-22 | 费长顺; 华晨光 | 32h |
| 5 | 5 | **程序框架实现** | 6d | 2015-01-23 | 2015-01-29 |  | 0d |  |  |  | 168h |
| 6 | 5.1 | 微信结构 | 3d | 2015-01-23 | 2015-01-27 | 2 | 17d | 0d | start no earlier than 2015-01-22 | 苏小燕 | 24h |
| 7 | 5.2 | lbs程序架构 | 3d | 2015-01-27 | 2015-01-29 | 4 | 15d | 0d | start no earlier than 2015-01-25 | 费长顺; 华晨光; 唐立广 | 72h |
| 8 | 5.3 | 前后台架构 | 3d | 2015-01-23 | 2015-01-27 | 2 | 0d |  | start no earlier than 2015-01-22 | 唐立广; 华晨光; 费长顺 | 72h |
| 9 | 6 | **功能实现** | 25d | 2015-01-28 | 2015-03-06 |  | 0d |  |  |  | 1824h |
| 10 | 6.1 | 微信支付 | 3d | 2015-01-28 | 2015-01-30 | 6 | 14d | 1d | finish no earlier than 2014-12-28 | 苏小燕 | 24h |
| 11 | 6.2 | 二维码 | 2d | 2015-02-02 | 2015-02-03 | 10 | 11d | 0d | start no earlier than 2015-01-29 | 苏小燕 | 16h |
| 12 | 6.3 | 公众账号 | 2d | 2015-02-04 | 2015-02-05 | 11 | 11d | 0d | start no earlier than 2015-02-02 | 苏小燕 | 16h |
| 13 | 6.4 | 微信与lbs应用通信 | 4d | 2015-02-06 | 2015-02-11 | 12 | 11d | 0d |  | 苏小燕; 唐立广; 费长顺 | 96h |
| 14 | 6.5 | 定位模块 | 5d | 2015-01-30 | 2015-02-05 | 7 | 14d | 0d | start no earlier than 2015-01-28 | 费长顺; 华晨光 | 80h |
| 15 | 6.6 | 轨迹和导航 | 7d | 2015-02-06 | 2015-02-16 | 14 | 13d |  | start no earlier than 2015-01-28 | 费长顺; 华晨光 | 112h |
| 16 | 6.7 | 信息展示 | 8d | 2015-01-28 | 2015-02-06 | 8 | 8d | 1d | start no earlier than 2015-01-26 | 唐立广; 费长顺; 华晨光 | 192h |
| 17 | 6.8 | POI推送 | 6d | 2015-02-09 | 2015-02-16 | 16 | 0d |  | start no earlier than 2015-02-04 | 唐立广; 费长顺; 华晨光 | 144h |
| 18 | 6.9 | 分享 | 4d | 2015-02-17 | 2015-02-20 | 17 | 0d |  | start no earlier than 2015-02-11 | 唐立广; 费长顺; 华晨光; 吴琼 | 128h |
| 19 | 6.10 | 社交（足迹、数据留存） | 7d | 2015-02-23 | 2015-03-03 | 18 | 5d |  | start no earlier than 2015-02-10 | 唐立广; 费长顺; 华晨光; 吴琼 | 224h |
| 20 | 6.11 | 二维码联通、支付 | 5d | 2015-02-12 | 2015-02-18 | 13 | 11d |  | start no earlier than 2015-01-27 | 苏小燕; 唐立广; 费长顺 | 120h |
| 21 | 6.12 | 统一用户认证 | 6d | 2015-01-28 | 2015-02-04 | 8 | 0d |  | start no earlier than 2015-01-22 | 华晨光; 吴琼; 费长顺 | 144h |
| 22 | 6.13 | 数据服务（POI、用户属性及行为） | 10d | 2015-02-05 | 2015-02-18 | 21 | 0d |  | start no earlier than 2015-01-28 | 华晨光; 吴琼; 费长顺 | 240h |
| 23 | 6.14 | 数据维护 | 7d | 2015-02-19 | 2015-02-27 | 22 | 0d |  | start no earlier than 2015-02-08 | 华晨光; 吴琼; 费长顺 | 168h |
| 24 | 6.15 | 数据统计 | 5d | 2015-03-02 | 2015-03-06 | 23 | 0d |  | start no earlier than 2015-02-13 | 华晨光; 吴琼; 费长顺 | 120h |
| 25 | 7 | 测试 | 2d | 2015-03-09 | 2015-03-10 | 24 | 0d |  | start no earlier than 2015-03-01 | 唐超; 费长顺; 唐立广; 苏小燕; 华晨光; 吴琼 | 96h |
| 26 | 8 | 部署上线 | 2d | 2015-03-11 | 2015-03-12 | 25 | 0d |  | start no earlier than 2015-03-03 | 费长顺; 唐超 | 32h |
